# National Health Campaign

Schedule from MS Project, 2024-03-06 to 2024-03-28, costs in €, A marks actual dates.
Research Programme
ABC Research Ltd.

## Calendars

- Standard: Mon-Fri 08:00-12:00, 13:00-17:00; Sat-Sun off.

## Resources

| Resource | Group | Rate |
| --- | --- | --- |
| Joanne Kelly | Management | 19.23 |
| Riona Carr | Executive | 6.25 |
| Mary Breen | Management | 19.23 |
| Tom Joyce | Office Staff | 6.88 |
| Conf Room | Facilities |  |
| Junior Staff | Office Staff | 3.75 |
| Printing | External |  |

## Schedule

| ID | WBS | Task | Type | Duration | Start | Finish | Predecessors | Complete | Remaining | Baseline start | Baseline finish | Baseline duration | Total slack | Resources | Work | Actual work | Cost | Baseline cost | Actual cost |
| --- | --- | --- | --- | --- | --- | --- | --- | --- | --- | --- | --- | --- | --- | --- | --- | --- | --- | --- | --- |
| 1 | 1 | **National Health Campaign** |  | 16.5d | 2024-03-06 A | 2024-03-28 |  | 10% | 14.9d | 2024-03-06 | 2024-03-28 | 16.5d | 0d | Junior Staff | 588h | 48.77h | 4,839.42 | 4,809.42 | 430.6 |
| 2 | 1.1 | **Survey Setup** |  | 11d | 2024-03-06 A | 2024-03-21 |  | 14% | 9.5d | 2024-03-06 | 2024-03-21 | 11d | 0d |  | 180h | 24h | 990.19 | 960.19 | 337.69 |
| 3 | 1.1.1 | **Planning** |  | 11d | 2024-03-06 A | 2024-03-21 |  | 25% | 8.25d | 2024-03-06 | 2024-03-21 | 11d | 0d |  | 96h | 24h | 517.69 | 487.69 | 337.69 |
| 4 | 1.1.1.1 | Design Questionarre | manual | 2d | 2024-03-06 A | 2024-03-07 A |  | 100% |  | 2024-03-06 | 2024-03-07 | 2d |  | Joanne Kelly | 16h | 16h | 307.69 | 307.69 | 307.69 |
| 5 | 1.1.1.2 | Type questionnaire | manual | 2d | 2024-03-08 A | 2024-03-11 | 4 | 50% | 1d | 2024-03-08 | 2024-03-08 | 1d |  | Junior Staff | 16h | 8h | 60 | 30 | 30 |
| 6 | 1.1.1.3 | Print questionnaire | manual | 1w | 2024-03-11 | 2024-03-15 | 5 |  |  | 2024-03-11 | 2024-03-15 | 1w |  | Printing | 40h |  |  |  |  |
| 7 | 1.1.1.4 | Invite interviewers to briefing meeting | manual | 3d | 2024-03-11 | 2024-03-13 | 6SS |  |  | 2024-03-11 | 2024-03-13 | 3d |  | Riona Carr | 24h |  | 150 | 150 |  |
| 8 | 1.1.1.5 | Survey planning complete | milestone, manual | 0d | 2024-03-21 | 2024-03-21 | 7 |  |  | 2024-03-21 | 2024-03-21 | 0d |  |  |  |  |  |  |  |
| 9 | 1.1.2 | **Briefing Setup** |  | 7.5d | 2024-03-08 | 2024-03-20 |  |  |  | 2024-03-08 | 2024-03-20 | 7.5d | 0d |  | 84h |  | 472.5 | 472.5 |  |
| 10 | 1.1.2.1 | Book conference room for briefing meeting | manual | 4h | 2024-03-18 | 2024-03-18 | 6 |  |  | 2024-03-18 | 2024-03-18 | 4h |  | Tom Joyce | 4h |  | 27.5 | 27.5 |  |
| 11 | 1.1.2.2 | Contact interviewing locations | manual | 2d | 2024-03-18 | 2024-03-19 | 10SS |  |  | 2024-03-18 | 2024-03-19 | 2d |  | Tom Joyce | 16h |  | 110 | 110 |  |
| 12 | 1.1.2.3 | Prepare rosters | manual | 4d | 2024-03-08 | 2024-03-14 | 11 |  |  | 2024-03-08 | 2024-03-14 | 4d |  | Tom Joyce | 32h |  | 220 | 220 |  |
| 13 | 1.1.2.4 | Prepare packs for each interviewer | manual | 3d | 2024-03-14 | 2024-03-19 | 12 |  |  | 2024-03-14 | 2024-03-19 | 3d |  | Junior Staff | 24h |  | 90 | 90 |  |
| 14 | 1.1.2.5 | Briefing Meeting with Interviewers | manual | 4h | 2024-03-19 | 2024-03-19 | 13 |  |  | 2024-03-19 | 2024-03-19 | 4h |  | Conf Room; Riona Carr | 8h |  | 25 | 25 |  |
| 15 | 1.1.2.6 | Interviewers briefing complete | milestone, manual | 0d | 2024-03-20 | 2024-03-20 | 14 |  |  | 2024-03-20 | 2024-03-20 | 0d |  |  |  |  |  |  |  |
| 16 | 1.2 | **Data processing** |  | 16.5d | 2024-03-06 A | 2024-03-28 |  | 9% | 15d | 2024-03-06 | 2024-03-28 | 16.5d | 0d |  | 148h | 12h | 892.69 | 892.69 | 45 |
| 17 | 1.2.1 | Prepare Book-in forms | manual | 2d | 2024-03-06 | 2024-03-07 |  |  |  | 2024-03-06 | 2024-03-07 | 2d |  | Riona Carr | 16h |  | 100 | 100 |  |
| 18 | 1.2.2 | Check questionnaires | manual | 2d | 2024-03-08 | 2024-03-11 | 17 |  |  | 2024-03-08 | 2024-03-11 | 2d |  | Junior Staff | 16h |  | 60 | 60 |  |
| 19 | 1.2.3 | Code questionnaires | manual | 1.5w | 2024-03-08 | 2024-03-19 | 18SS |  |  | 2024-03-08 | 2024-03-19 | 1.5w |  | Junior Staff | 60h |  | 225 | 225 |  |
| 20 | 1.2.4 | Input data in computer | manual | 3d | 2024-03-14 A | 2024-03-19 | 19FS-3d | 50% | 1.5d | 2024-03-14 | 2024-03-19 | 3d |  | Junior Staff | 24h | 12h | 90 | 90 | 45 |
| 21 | 1.2.5 | Analyse the data | manual | 2d | 2024-03-26 | 2024-03-28 | 20 |  |  | 2024-03-26 | 2024-03-28 | 2d |  | Joanne Kelly; Tom Joyce | 32h |  | 417.69 | 417.69 |  |
| 22 | 1.2.6 | Data Processing complete | milestone, manual | 0d | 2024-03-28 | 2024-03-28 | 21 |  |  | 2024-03-28 | 2024-03-28 | 0d |  |  |  |  |  |  |  |
| 23 | 1.3 | **Interpretation** |  | 8d | 2024-03-06 | 2024-03-18 | 16 |  |  | 2024-03-06 | 2024-03-18 | 8d | 0d |  | 128h |  | 2,461.54 | 2,461.54 |  |
| 24 | 1.3.1 | Prepare presentation | manual | 3d | 2024-03-06 | 2024-03-08 |  |  |  | 2024-03-06 | 2024-03-08 | 3d |  | Joanne Kelly; Mary Breen | 48h |  | 923.08 | 923.08 |  |
| 25 | 1.3.2 | Prepare research report | manual | 1w | 2024-03-11 | 2024-03-15 | 24 |  |  | 2024-03-11 | 2024-03-15 | 1w |  | Joanne Kelly; Mary Breen | 80h |  | 1,538.46 | 1,538.46 |  |
| 26 | 1.3.3 | Project complete | milestone, manual | 0d | 2024-03-18 | 2024-03-18 | 25 |  |  | 2024-03-18 | 2024-03-18 | 0d |  |  |  |  |  |  |  |
